# Linux-HA project

How a schedule from Planner changed from version to version. A marks actual dates.

## Version 1 (saved 2005-01-19)

Note of the change: Added first very early verision of a plan for 2005 using the Gnome 'planner'.

| ID | WBS | Task | Duration | Start | Finish | Predecessors | Complete | Constraint |
| --- | --- | --- | --- | --- | --- | --- | --- | --- |
| 1 | 1 | **2.0.0 release** |  | 2005-01-16 | 2005-03-07 |  |  |  |
| 2 |  | 2.0.0 test preparation | 5d | 2005-01-16 | 2005-01-25 |  |  |  |
| 3 |  | 2.0.0 testing | 15d | 2005-01-25 | 2005-03-01 | 2, 26SS+10h |  |  |
| 4 |  | 2.0.0 release process |  | 2005-03-01 | 2005-03-07 | 3 |  |  |
| 5 |  | 2.0.0 release | 0d | 2005-03-07 | 2005-03-07 | 4 |  |  |
| 6 | 2 | **2.0.1 release** |  | 2005-03-07 | 2005-04-18 | 1FS+1h |  | start no earlier than 2005-02-22 |
| 7 |  | 2.0.1 receive feedback, fix bugs from 2.0.0 | 15d | 2005-03-07 | 2005-03-28 |  |  |  |
| 8 |  | 2.0.1 test preparation |  | 2005-03-28 | 2005-03-29 | 7 |  |  |
| 9 |  | 2.0.1 testing |  | 2005-03-29 | 2005-04-12 | 8 |  |  |
| 10 |  | 2.0.1 release process |  | 2005-04-12 | 2005-04-18 | 9 |  |  |
| 11 |  | 2.0.1 release | 0d | 2005-04-18 | 2005-04-18 | 10 |  |  |
| 12 | 3 | **2.0.2 release** |  | 2005-04-18 | 2005-06-14 | 6FS+1h |  | start no earlier than 2005-01-18 |
| 13 |  | 2.0.2 receive feedback, fix bugs from 2.0.1 | 20d | 2005-04-18 | 2005-05-16 |  |  |  |
| 14 |  | 2.0.2 test preparation |  | 2005-05-16 | 2005-05-18 | 13 |  |  |
| 15 |  | 2.0.2 testing | 15d | 2005-05-18 | 2005-06-08 | 14 |  |  |
| 16 |  | 2.0.2 release process | 2d | 2005-06-08 | 2005-06-14 | 15 |  |  |
| 17 |  | 2.0.2 release | 0d | 2005-06-14 | 2005-06-14 | 16 |  |  |
| 18 | 4 | **2.0.3 release** |  | 2005-06-14 | 2005-10-03 |  |  |  |
| 19 |  | 2.0.3 receive feedback, fix bugs from 2.0.2 | 60d | 2005-06-14 | 2005-09-06 | 12 |  |  |
| 20 |  | 2.0.3 test preparation |  | 2005-09-06 | 2005-09-08 | 19 |  |  |
| 21 |  | 2.0.3 testing |  | 2005-09-08 | 2005-09-29 | 20 |  |  |
| 22 |  | 2.0.3 release process |  | 2005-09-29 | 2005-10-03 | 21 |  |  |
| 23 |  | 2.0.3 release | 0d | 2005-10-03 | 2005-10-03 | 22 |  |  |
| 24 |  | 229.19: Community (RH) Cluster Integration |  | 2005-01-16 | 2005-02-25 |  |  |  |
| 25 |  | 229.20: project leadership, etc. | 166d | 2005-01-16 | 2006-02-06 |  | 100% |  |
| 26 |  | 229.23: revised STONITH API |  | 2005-01-16 | 2005-02-16 |  |  |  |
| 27 |  | 1039.14: CIM support |  | 2005-01-16 | 2005-02-04 |  |  |  |
| 28 |  | 1040.04: Internal IBM support |  | 2005-01-16 | 2005-02-11 |  |  |  |
| 29 |  | 1040.07: Ongoing advocacy |  | 2005-01-16 | 2005-02-11 |  |  |  |
| 30 |  | 1041.19: Make IPC library thread-safe |  | 2005-01-16 | 2005-02-04 |  |  |  |
| 31 |  | 1041.21: Make apphbd library thread-safe |  | 2005-01-16 | 2005-01-28 |  |  |  |
| 32 |  | 1041.22: Make hbclient library thread-safe |  | 2005-01-16 | 2005-01-28 |  |  |  |
| 33 |  | 1041.24: MontaVista integration work |  | 2005-01-16 | 2005-02-04 |  |  |  |
| 34 |  | 1041.27: HPI Stonith Support for BladeCenter |  | 2005-01-16 | 2005-01-28 |  |  |  |
| 35 |  | 1041.28: AIS performance improvements |  | 2005-01-16 | 2005-01-17 |  |  |  |
| 36 |  | 1042.10: Certification with IBM storage |  | 2005-01-16 | 2005-02-11 |  |  |  |
| 37 |  | 1044.09: Create new test cases |  | 2005-01-16 | 2005-02-11 |  |  |  |
| 38 |  | 1044.11: Create certification process |  | 2005-01-16 | 2005-02-04 |  |  |  |
| 39 |  | 1042.06: (DONE) DRBD/DB2 performance testing |  | 2005-01-16 | 2005-01-17 |  |  |  |
| 40 |  | 1041.23: ?Make SAF libraries thread-safe |  | 2005-01-16 | 2005-02-11 |  |  |  |
| 41 |  | 1040.06: !Move web site to new format |  | 2005-01-16 | 2005-01-28 |  |  |  |
| 42 |  | 1044.08: ?Merge two test tools |  | 2005-01-16 | 2005-01-28 |  |  |  |
| 43 |  | 229.21: ?Internationalization |  | 2005-01-16 | 2005-02-11 |  |  |  |
| 44 |  | 1041.25: ?TIPC Integration |  | 2005-01-16 | 2005-02-04 |  |  |  |
| 45 |  | 1044.09: ?Creation of new test cases |  | 2005-01-16 | 2005-02-11 |  |  |  |
| 46 |  | 1044.10: ?Fully automated nightly tests |  | 2005-01-16 | 2005-02-04 |  |  |  |

## Version 2 (saved 2005-01-19)

Note of the change: Plan updates.

Last finish 2006-02-06 → 2005-10-03 (-126d).

Changed:

| ID | Task | Finish | Duration | Other |
| --- | --- | --- | --- | --- |
| 25 | 229.20: project leadership, etc. | 2006-02-06 → 2005-09-28 (-131d) | 166d → 111d | resources Alan Robertson [30%] → Alan Robertson [20%] |

## Version 3 (saved 2005-01-19)

Note of the change: Misc changes. Added date1 and date2.

Last finish 2005-10-03 → 2005-09-15 (-18d).

Added:

| ID | Task | Duration | Start | Finish | Predecessors |
| --- | --- | --- | --- | --- | --- |
| 24 | Date 1 | 91d | 2005-01-22 | 2005-05-30 | 1SS+180h |
| 25 | Date 2 | 174d | 2005-01-15 | 2005-09-15 |  |

Changed:

| ID | Task | Start | Finish |
| --- | --- | --- | --- |
| 1 | **2.0.0 release** | 2005-01-16 → 2005-01-15 (-1d) | 2005-03-07 → 2005-02-09 (-26d) |
| 2 | 2.0.0 test preparation | 2005-01-16 → 2005-01-15 (-1d) | 2005-01-25 → 2005-01-20 (-5d) |
| 3 | 2.0.0 testing | 2005-01-25 → 2005-01-20 (-5d) | 2005-03-01 → 2005-02-07 (-22d) |
| 4 | 2.0.0 release process | 2005-03-01 → 2005-02-07 (-22d) | 2005-03-07 → 2005-02-09 (-26d) |
| 5 | 2.0.0 release | 2005-03-07 → 2005-02-09 (-26d) | 2005-03-07 → 2005-02-09 (-26d) |
| 6 | **2.0.1 release** | 2005-03-07 → 2005-02-09 (-26d) | 2005-04-18 → 2005-03-19 (-30d) |
| 7 | 2.0.1 receive feedback, fix bugs from 2.0.0 | 2005-03-07 → 2005-02-09 (-26d) | 2005-03-28 → 2005-03-02 (-26d) |
| 8 | 2.0.1 test preparation | 2005-03-28 → 2005-03-02 (-26d) | 2005-03-29 → 2005-03-03 (-26d) |
| 9 | 2.0.1 testing | 2005-03-29 → 2005-03-03 (-26d) | 2005-04-12 → 2005-03-17 (-26d) |
| 10 | 2.0.1 release process | 2005-04-12 → 2005-03-17 (-26d) | 2005-04-18 → 2005-03-19 (-30d) |
| 11 | 2.0.1 release | 2005-04-18 → 2005-03-19 (-30d) | 2005-04-18 → 2005-03-19 (-30d) |
| 12 | **2.0.2 release** | 2005-04-18 → 2005-03-19 (-30d) | 2005-06-14 → 2005-05-12 (-33d) |
| 13 | 2.0.2 receive feedback, fix bugs from 2.0.1 | 2005-04-18 → 2005-03-19 (-30d) | 2005-05-16 → 2005-04-15 (-31d) |
| 14 | 2.0.2 test preparation | 2005-05-16 → 2005-04-15 (-31d) | 2005-05-18 → 2005-04-19 (-29d) |
| 15 | 2.0.2 testing | 2005-05-18 → 2005-04-19 (-29d) | 2005-06-08 → 2005-05-10 (-29d) |
| 16 | 2.0.2 release process | 2005-06-08 → 2005-05-10 (-29d) | 2005-06-14 → 2005-05-12 (-33d) |
| 17 | 2.0.2 release | 2005-06-14 → 2005-05-12 (-33d) | 2005-06-14 → 2005-05-12 (-33d) |
| 18 | **2.0.3 release** | 2005-06-14 → 2005-05-12 (-33d) | 2005-10-03 → 2005-08-31 (-33d) |
| 19 | 2.0.3 receive feedback, fix bugs from 2.0.2 | 2005-06-14 → 2005-05-12 (-33d) | 2005-09-06 → 2005-08-04 (-33d) |
| 20 | 2.0.3 test preparation | 2005-09-06 → 2005-08-04 (-33d) | 2005-09-08 → 2005-08-08 (-31d) |
| 21 | 2.0.3 testing | 2005-09-08 → 2005-08-08 (-31d) | 2005-09-29 → 2005-08-29 (-31d) |
| 22 | 2.0.3 release process | 2005-09-29 → 2005-08-29 (-31d) | 2005-10-03 → 2005-08-31 (-33d) |
| 23 | 2.0.3 release | 2005-10-03 → 2005-08-31 (-33d) | 2005-10-03 → 2005-08-31 (-33d) |
| 26 | 229.19: Community (RH) Cluster Integration | 2005-01-16 → 2005-01-15 (-1d) |  |
| 27 | 229.20: project leadership, etc. | 2005-01-16 → 2005-01-15 (-1d) | 2005-09-28 → 2005-05-24 (-127d) |
| 28 | 229.23: revised STONITH API | 2005-01-16 → 2005-01-15 (-1d) | 2005-02-16 → 2005-02-01 (-15d) |
| 29 | 1039.14: CIM support | 2005-01-16 → 2005-01-15 (-1d) |  |
| 30 | 1040.04: Internal IBM support | 2005-01-16 → 2005-01-15 (-1d) |  |
| 31 | 1040.07: Ongoing advocacy | 2005-01-16 → 2005-01-15 (-1d) |  |
| 32 | 1041.19: Make IPC library thread-safe | 2005-01-16 → 2005-01-15 (-1d) |  |
| 33 | 1041.21: Make apphbd library thread-safe | 2005-01-16 → 2005-01-15 (-1d) |  |
| 34 | 1041.22: Make hbclient library thread-safe | 2005-01-16 → 2005-01-15 (-1d) |  |
| 35 | 1041.24: MontaVista integration work | 2005-01-16 → 2005-01-15 (-1d) |  |
| 36 | 1041.27: HPI Stonith Support for BladeCenter | 2005-01-16 → 2005-01-15 (-1d) |  |
| 37 | 1041.28: AIS performance improvements | 2005-01-16 → 2005-01-15 (-1d) |  |
| 38 | 1042.10: Certification with IBM storage | 2005-01-16 → 2005-01-15 (-1d) |  |
| 39 | 1044.09: Create new test cases | 2005-01-16 → 2005-01-15 (-1d) |  |
| 40 | 1044.11: Create certification process | 2005-01-16 → 2005-01-15 (-1d) |  |
| 41 | 1042.06: (DONE) DRBD/DB2 performance testing | 2005-01-16 → 2005-01-15 (-1d) |  |
| 42 | 1041.23: ?Make SAF libraries thread-safe | 2005-01-16 → 2005-01-15 (-1d) |  |
| 43 | 1040.06: !Move web site to new format | 2005-01-16 → 2005-01-15 (-1d) |  |
| 44 | 1044.08: ?Merge two test tools | 2005-01-16 → 2005-01-15 (-1d) |  |
| 45 | 229.21: ?Internationalization | 2005-01-16 → 2005-01-15 (-1d) |  |
| 46 | 1041.25: ?TIPC Integration | 2005-01-16 → 2005-01-15 (-1d) |  |
| 47 | 1044.09: ?Creation of new test cases | 2005-01-16 → 2005-01-15 (-1d) |  |
| 48 | 1044.10: ?Fully automated nightly tests | 2005-01-16 → 2005-01-15 (-1d) |  |

## Version 4 (saved 2005-01-20)

Note of the change: More changes - esp. calendar changes.

Last finish 2005-09-15 → 2005-09-17 (+2d).

Added:

| ID | Task | Start | Finish | Resources |
| --- | --- | --- | --- | --- |
| 41 | NUT STONITH plugin | 2005-01-15 | 2005-03-02 | Guochun Shi |
| 42 | CCM Maturation | 2005-01-15 | 2005-03-25 | Guochun Shi |
| 43 | Serial Link disconnect check | 2005-01-15 | 2005-02-07 | Guochun Shi |
| 44 | Total Ordered messaging | 2005-01-15 | 2005-03-02 | Guochun Shi |
| 45 | Resource Dependency Analysis | 2005-01-15 | 2005-01-17 |  |

Changed:

| ID | Task | Start | Finish | Duration | Predecessors | Other |
| --- | --- | --- | --- | --- | --- | --- |
| 2 | 2.0.0 test preparation |  |  |  |  | resources Alan Robertson [60%] → Alan Robertson [80%] |
| 18 | Date 1 | 2005-01-22 → 2005-01-15 (-7d) | 2005-05-30 → 2005-06-29 (+30d) | 91d → 118d | 1SS+180h → none |  |
| 27 | 229.20: project leadership, etc. |  | 2005-05-24 → 2005-09-17 (+116d) | 111d → 208d |  |  |

## Version 5 (saved 2005-01-21)

Note of the change: Put in GUI work from Corporacion Linux in Chile.

Last finish stays 2005-09-17.

Added:

| ID | Task | Duration | Start | Finish | Predecessors | Resources |
| --- | --- | --- | --- | --- | --- | --- |
| 41 | Fencing Integration |  | 2005-01-15 | 2005-01-25 |  | Andrew Beekhof |
| 42 | General CRM bug fixes - 2.0.0 |  | 2005-01-25 | 2005-02-01 | 3SS+4h |  |
| 43 | Master / Slave incarnation states |  | 2005-02-01 | 2005-02-24 | 42FS+1h | Andrew Beekhof |
| 44 | Standby support |  | 2005-02-24 | 2005-03-02 | 43 | Andrew Beekhof |
| 45 | Quorum support |  | 2005-03-02 | 2005-03-08 | 44 | Andrew Beekhof |
| 46 | General CRM bug fixes - 2.0.1 |  | 2005-03-08 | 2005-03-11 | 9SS |  |
| 47 | Constraint lifespans |  | 2005-03-11 | 2005-03-29 | 46 | Andrew Beekhof |
| 48 | Misc CRM cleanups and enhancements - 1 |  | 2005-03-29 | 2005-04-09 | 47 | Andrew Beekhof |
| 49 | Misc CRM cleanups and enhancements - 2 |  | 2005-04-09 | 2005-04-21 | 48 | Andrew Beekhof |
| 55 | Delay (C.L. start) | 11d | 2005-01-15 | 2005-01-31 |  |  |
| 56 | config daemon architecture |  | 2005-01-31 | 2005-02-07 | 55 |  |
| 57 | config/status API design |  | 2005-02-07 | 2005-02-22 | 56, 55 |  |
| 58 | config/status Daemon (for GUI) |  | 2005-02-22 | 2005-03-22 | 57 | Henriquez Rodrigo |
| 59 | GTK GUI |  | 2005-02-22 | 2005-03-22 | 57 | Pedro Villavicencio |
| 60 | Other GUI? |  | 2005-01-15 | 2005-01-17 |  |  |

Changed:

| ID | Task | Start | Finish | Predecessors |
| --- | --- | --- | --- | --- |
| 1 | **2.0.0 release** |  | 2005-02-09 → 2005-02-14 (+5d) |  |
| 3 | 2.0.0 testing | 2005-01-20 → 2005-01-25 (+5d) | 2005-02-07 → 2005-02-11 (+4d) | 2, 28SS+10h → 41, 2, 28SS+10h |
| 4 | 2.0.0 release process | 2005-02-07 → 2005-02-11 (+4d) | 2005-02-09 → 2005-02-14 (+5d) |  |
| 5 | 2.0.0 release | 2005-02-09 → 2005-02-14 (+5d) | 2005-02-09 → 2005-02-14 (+5d) |  |
| 6 | **2.0.1 release** | 2005-02-09 → 2005-02-14 (+5d) | 2005-03-19 → 2005-03-24 (+5d) |  |
| 7 | 2.0.1 receive feedback, fix bugs from 2.0.0 | 2005-02-09 → 2005-02-14 (+5d) | 2005-03-02 → 2005-03-07 (+5d) |  |
| 8 | 2.0.1 test preparation | 2005-03-02 → 2005-03-07 (+5d) | 2005-03-03 → 2005-03-08 (+5d) |  |
| 9 | 2.0.1 testing | 2005-03-03 → 2005-03-08 (+5d) | 2005-03-17 → 2005-03-22 (+5d) | 8 → 45, 44, 43, 8 |
| 10 | 2.0.1 release process | 2005-03-17 → 2005-03-22 (+5d) | 2005-03-19 → 2005-03-24 (+5d) |  |
| 11 | 2.0.1 release | 2005-03-19 → 2005-03-24 (+5d) | 2005-03-19 → 2005-03-24 (+5d) |  |
| 12 | **2.0.2 release** | 2005-03-19 → 2005-03-24 (+5d) | 2005-05-12 → 2005-05-18 (+6d) |  |
| 13 | 2.0.2 receive feedback, fix bugs from 2.0.1 | 2005-03-19 → 2005-03-24 (+5d) | 2005-04-15 → 2005-04-21 (+6d) |  |
| 14 | 2.0.2 test preparation | 2005-04-15 → 2005-04-21 (+6d) | 2005-04-19 → 2005-04-25 (+6d) |  |
| 15 | 2.0.2 testing | 2005-04-19 → 2005-04-25 (+6d) | 2005-05-10 → 2005-05-16 (+6d) | 14 → 49, 48, 47, 14 |
| 16 | 2.0.2 release process | 2005-05-10 → 2005-05-16 (+6d) | 2005-05-12 → 2005-05-18 (+6d) |  |
| 17 | 2.0.2 release | 2005-05-12 → 2005-05-18 (+6d) | 2005-05-12 → 2005-05-18 (+6d) |  |
| 19 | **2.0.3 release** | 2005-05-12 → 2005-05-18 (+6d) | 2005-08-31 → 2005-09-06 (+6d) |  |
| 20 | 2.0.3 receive feedback, fix bugs from 2.0.2 | 2005-05-12 → 2005-05-18 (+6d) | 2005-08-04 → 2005-08-10 (+6d) |  |
| 21 | 2.0.3 test preparation | 2005-08-04 → 2005-08-10 (+6d) | 2005-08-08 → 2005-08-12 (+4d) |  |
| 22 | 2.0.3 testing | 2005-08-08 → 2005-08-12 (+4d) | 2005-08-29 → 2005-09-02 (+4d) |  |
| 23 | 2.0.3 release process | 2005-08-29 → 2005-09-02 (+4d) | 2005-08-31 → 2005-09-06 (+6d) |  |
| 24 | 2.0.3 release | 2005-08-31 → 2005-09-06 (+6d) | 2005-08-31 → 2005-09-06 (+6d) |  |

## Version 6 (saved 2005-01-21)

Note of the change: Put the management GUI items as child items as item "37"

Last finish 2005-09-17 → 2005-09-15 (-2d).

Added:

| ID | Task | Start | Finish |
| --- | --- | --- | --- |
| 56 | **Management GUI** | 2005-01-31 | 2005-03-10 |

Changed:

| ID | Task | Start | Finish | Duration | Predecessors | Other |
| --- | --- | --- | --- | --- | --- | --- |
| 27 | 229.20: project leadership, etc. |  | 2005-09-17 → 2005-09-14 (-3d) | 208d → 205d |  |  |
| 57 | config daemon architecture |  | 2005-02-07 → 2005-02-03 (-4d) |  |  | resources none → Pedro Villavicencio; Henriquez Rodrigo |
| 58 | config/status API design | 2005-02-07 → 2005-02-03 (-4d) | 2005-02-22 → 2005-02-10 (-12d) |  | 57, 55 → 57 | resources none → Pedro Villavicencio; Henriquez Rodrigo |
| 59 | config/status Daemon (for GUI) | 2005-02-22 → 2005-02-10 (-12d) | 2005-03-22 → 2005-03-10 (-12d) |  |  |  |
| 60 | GTK GUI | 2005-02-22 → 2005-02-10 (-12d) | 2005-03-22 → 2005-03-10 (-12d) |  |  |  |
| 61 | Other GUI? | 2005-01-15 → 2005-02-10 (+26d) | 2005-01-17 → 2005-02-11 (+25d) |  | none → 58 |  |

## Version 7 (saved 2005-01-21)

Note of the change: days needed for some work updated

Last finish stays 2005-09-15.

Changed:

| ID | Task | Finish | Other |
| --- | --- | --- | --- |
| 50 | NUT STONITH plugin | 2005-03-02 → 2005-01-31 (-30d) |  |
| 52 | Serial Link disconnect check | 2005-02-07 → 2005-01-22 (-16d) |  |
| 57 | config daemon architecture |  | resources Pedro Villavicencio; Henriquez Rodrigo → Henriquez Rodrigo; Pedro Villavicencio |
| 58 | config/status API design |  | resources Pedro Villavicencio; Henriquez Rodrigo → Henriquez Rodrigo; Pedro Villavicencio |

## Version 8 (saved 2005-01-26)

Note of the change: Updated Gshi's schedule.

Last finish stays 2005-09-15.

Changed:

| ID | Task | Start | Finish | Predecessors | Other |
| --- | --- | --- | --- | --- | --- |
| 14 | 2.0.2 test preparation |  |  | 13 → 52, 51, 50, 13 |  |
| 51 | NUT STONITH plugin | 2005-01-15 → 2005-03-25 (+69d) | 2005-01-31 → 2005-04-11 (+70d) | none → 50 |  |
| 52 | Serial Link disconnect check | 2005-01-15 → 2005-04-11 (+86d) | 2005-01-22 → 2005-04-19 (+87d) | none → 51 |  |
| 53 | ?Total Ordered messaging |  |  |  | was named Total Ordered messaging |
| 57 | config daemon architecture |  |  |  | resources Henriquez Rodrigo; Pedro Villavicencio → Pedro Villavicencio; Henriquez Rodrigo |
| 58 | config/status API design |  |  |  | resources Henriquez Rodrigo; Pedro Villavicencio → Pedro Villavicencio; Henriquez Rodrigo |

## Version 9 (saved 2005-02-01)

Note of the change: Put in the latest version of the plan - with some new work assigned to IBM-china

Last finish stays 2005-09-15.

Added:

| ID | Task | Duration | Start | Finish |
| --- | --- | --- | --- | --- |
| 32 | apphbd start delay | 11d | 2005-01-15 | 2005-01-31 |

Changed:

| ID | Task | Start | Finish | Duration | Predecessors | Other |
| --- | --- | --- | --- | --- | --- | --- |
| 14 | 2.0.2 test preparation |  |  |  | 53, 52, 51, 13 → 13 |  |
| 15 | 2.0.2 testing |  |  |  | 50, 49, 48, 14 → 53, 52, 51, 50, 49, 48, 14 |  |
| 18 | a |  |  |  |  | was named Date 1 |
| 25 | b |  |  |  |  | was named Date 2 |
| 33 | 1041.19: Make IPC library thread-safe |  |  | none → 15d |  |  |
| 34 | 1041.21: Make apphbd library thread-safe | 2005-01-15 → 2005-01-31 (+16d) | 2005-01-28 → 2005-02-21 (+24d) |  | none → 32 | resources none → Sun, Jiang Dong |
| 58 | config daemon architecture |  |  |  |  | resources Pedro Villavicencio; Henriquez Rodrigo → Henriquez Rodrigo; Pedro Villavicencio |
| 59 | config/status API design |  |  |  |  | resources Pedro Villavicencio; Henriquez Rodrigo → Henriquez Rodrigo; Pedro Villavicencio |

## Version 10 (saved 2005-02-12)

Note of the change: schedule updates.

Last finish stays 2005-09-15.

Added:

| ID | Task | Start | Finish | Resources |
| --- | --- | --- | --- | --- |
| 42 | **Larger Clusters (CRM development)** | 2005-01-15 | 2005-04-21 |  |
| 64 | **Dynamic Node Adds / Deletes** | 2005-01-15 | 2005-02-04 |  |
| 65 | Heartbeat effort | 2005-01-15 | 2005-02-04 |  |
| 66 | CCM effort | 2005-01-15 | 2005-01-15 | Guochun Shi |
| 67 | CRM effort | 2005-01-15 | 2005-01-15 | Andrew Beekhof |

Changed:

| ID | Task | Predecessors |
| --- | --- | --- |
| 44 | General CRM bug fixes - 2.0.0 | 3SS+4h → 43 |
| 45 | Master / Slave incarnation states | 44FS+1h → 44 |
| 48 | General CRM bug fixes - 2.0.1 | 9SS → 47 |
